# Lab3

Schedule from MS Project, 2022-11-01 to 2022-12-27, status date 2022-11-19, costs in $, A marks actual dates.

## Calendars

- Standard: Mon-Fri 08:00-12:00, 13:00-17:00; Sat-Sun off.

## Resources

| Resource | Group | Rate |
| --- | --- | --- |
| Cao Thị Thanh Mai | NV | 6 |
| Lê Huy Phước | NV | 5 |
| Vũ Đình Phú | NV | 5 |
| Hồ Đức Trí | NV | 5 |
| Hà Minh Đức | NV | 6 |
| Đinh Thế Vinh | NV | 6 |
| Google Maps |  |  |
| React Native |  |  |
| Amazon RDS |  | 30 |
| Oracle |  |  |
| Latop |  | 500 |
| Chuột |  | 5 |
| Slack |  | 7.25 |
| Gitlab |  | 19 |

## Schedule

| ID | WBS | Task | Type | Duration | Start | Finish | Predecessors | Complete | Remaining | Baseline start | Baseline finish | Baseline duration | Baseline 1 start | Baseline 1 finish | Total slack | Resources | Work | Actual work | Cost | Baseline cost | Actual cost |
| --- | --- | --- | --- | --- | --- | --- | --- | --- | --- | --- | --- | --- | --- | --- | --- | --- | --- | --- | --- | --- | --- |
| 1 | 1 | Project Statistics (Xem hình statistics.png được gửi đính kèm) | manual | 1d | 2022-11-01 A | 2022-11-01 A |  | 100% |  |  |  |  | 2022-11-01 | 2022-11-01 |  |  |  |  |  |  |  |
| 2 | 2 | **Front-end** |  | 41d | 2022-11-01 A | 2022-12-27 |  | 60% | 16.54d | 2022-11-01 | 2022-12-26 | 40d | 2022-11-01 | 2022-12-27 |  |  | 464h | 276.8h | 2,616 | 2,528 | 1,582.4 |
| 3 | 2.1 | **Bản đồ các trạm xe buýt** |  | 17d | 2022-11-02 A | 2022-11-24 |  | 83% | 2.83d | 2022-11-02 | 2022-11-23 | 16d | 2022-11-02 | 2022-11-24 | 0d |  | 96h | 80h | 576 | 576 | 480 |
| 4 | 2.1.1 | Vẽ bản đồ địa lý | manual | 5d | 2022-11-08 A | 2022-11-14 A |  | 100% |  | 2022-11-08 | 2022-11-15 | 6d | 2022-11-08 | 2022-11-14 |  | Cao Thị Thanh Mai | 40h | 40h | 240 | 288 | 240 |
| 5 | 2.1.2 | Vẽ các điểm trạm trên bản đồ | manual | 7d | 2022-11-02 A | 2022-11-24 | 25 | 71% | 2d | 2022-11-02 | 2022-11-23 | 6d | 2022-11-02 | 2022-11-24 |  | Cao Thị Thanh Mai | 56h | 40h | 336 | 288 | 240 |
| 6 | 2.2 | **Thông tin của trạm** |  | 15d | 2022-11-02 A | 2022-11-22 |  | 75% | 3.75d | 2022-11-02 | 2022-11-22 | 15d | 2022-11-02 | 2022-11-22 | 25d |  | 64h | 48h | 384 | 384 | 288 |
| 7 | 2.2.1 | Hiển thị các tuyến đi qua trạm (mã tuyến, chiều) |  | 4d | 2022-11-17 A | 2022-11-22 | 24, 4 | 50% | 2d | 2022-11-17 | 2022-11-22 | 4d | 2022-11-17 | 2022-11-22 | 25d | Đinh Thế Vinh | 32h | 16h | 192 | 192 | 96 |
| 8 | 2.2.2 | Hiển thị thông tin cơ bản của từng tuyến | manual | 4d | 2022-11-02 A | 2022-11-07 A | 26 | 100% |  | 2022-11-02 | 2022-11-07 | 4d | 2022-11-02 | 2022-11-07 |  | Đinh Thế Vinh | 32h | 32h | 192 | 192 | 192 |
| 9 | 2.3 | **Tìm đường từ trạm A đến trạm B** |  | 41d | 2022-11-01 A | 2022-12-27 |  | 33% | 27.33d | 2022-11-01 | 2022-12-26 | 40d | 2022-11-01 | 2022-12-27 | 0d |  | 96h | 32h | 480 | 480 | 160 |
| 10 | 2.3.1 | Form nhập vị trí hiện tại và vị trí cần đến | manual | 4d | 2022-11-01 A | 2022-11-04 A |  | 100% |  | 2022-11-01 | 2022-11-04 | 4d | 2022-11-01 | 2022-11-04 |  | Lê Huy Phước | 32h | 32h | 160 | 160 | 160 |
| 11 | 2.3.2 | Hiển thị danh sách các đường đi khả thi |  | 5d | 2022-12-16 | 2022-12-22 | 39 |  |  | 2022-12-09 | 2022-12-21 | 4d | 2022-12-16 | 2022-12-22 | 3d | Lê Huy Phước | 40h |  | 200 | 160 |  |
| 12 | 2.3.3 | Vẽ chi tiết tuyến đường hướng dẫn |  | 3d | 2022-12-23 | 2022-12-27 | 39, 4 |  |  | 2022-12-16 | 2022-12-26 | 4d | 2022-12-23 | 2022-12-27 | 0d | Lê Huy Phước | 24h |  | 120 | 160 |  |
| 13 | 2.4 | **Danh sách các tuyến xe buýt** |  | 4d | 2022-11-11 A | 2022-11-16 A |  | 100% |  | 2022-11-11 | 2022-11-16 | 4d | 2022-11-11 | 2022-11-16 |  |  | 32h | 32h | 192 | 192 | 192 |
| 14 | 2.4.1 | Hiển thị danh sách các tuyến xe bus (mã tuyến, bến đầu bến cuối, giá tiền, đánh giá) | manual | 4d | 2022-11-11 A | 2022-11-16 A | 33 | 100% |  | 2022-11-11 | 2022-11-16 | 4d | 2022-11-11 | 2022-11-16 |  | Đinh Thế Vinh | 32h | 32h | 192 | 192 | 192 |
| 15 | 2.5 | **Chi tiết của tuyến xe buýt cụ thể** |  | 16d | 2022-11-11 A | 2022-12-02 |  | 62% | 6.08d | 2022-11-11 | 2022-12-01 | 15d | 2022-11-11 | 2022-12-02 | 0d |  | 80h | 49.6h | 440 | 352 | 257.6 |
| 16 | 2.5.1 | Hiển thị thông tin chi tiết (các trạm, thời gian di chuyển giữa các trạm, lịch trình xuất phát) | manual | 5d | 2022-11-28 A | 2022-12-02 | 36 | 24% | 3.8d | 2022-11-28 | 2022-12-01 | 4d | 2022-11-28 | 2022-12-02 |  | Đinh Thế Vinh | 40h | 9.6h | 240 | 192 | 57.6 |
| 17 | 2.5.2 | Biểu đồ tuyến đường của các tuyến xe buýt |  | 5d | 2022-11-11 A | 2022-11-17 A | 36 | 100% |  | 2022-11-11 | 2022-11-16 | 4d | 2022-11-11 | 2022-11-17 |  | Lê Huy Phước | 40h | 40h | 200 | 160 | 200 |
| 18 | 2.6 | **Đánh giá tuyến xe buýt** |  | 4d | 2022-11-17 A | 2022-11-22 |  | 50% | 2d | 2022-11-17 | 2022-11-22 | 4d | 2022-11-17 | 2022-11-22 | 0d |  | 32h | 16h | 192 | 192 | 96 |
| 19 | 2.6.1 | Đánh giá theo sao, bình luận cho tuyến | manual | 4d | 2022-11-17 A | 2022-11-22 | 14 | 50% | 2d | 2022-11-17 | 2022-11-22 | 4d | 2022-11-17 | 2022-11-22 |  | Cao Thị Thanh Mai | 32h | 16h | 192 | 192 | 96 |
| 20 | 2.7 | **Tùy chỉnh thông báo** |  | 17d | 2022-11-23 A | 2022-12-15 |  | 30% | 11.9d | 2022-11-23 | 2022-12-15 | 17d | 2022-11-23 | 2022-12-15 | 0d |  | 64h | 19.2h | 352 | 352 | 108.8 |
| 21 | 2.7.1 | Thông báo chuyến xe sắp đến trạm | manual | 4d | 2022-11-23 A | 2022-12-05 | 43 | 40% | 2.4d | 2022-11-23 | 2022-12-02 | 4d | 2022-11-23 | 2022-12-05 |  | Đinh Thế Vinh | 32h | 12.8h | 192 | 192 | 76.8 |
| 22 | 2.7.2 | Thông báo khi tuyến xe thay đổi lịch trình | manual | 4d | 2022-12-12 A | 2022-12-15 | 44 | 20% | 3.2d | 2022-12-12 | 2022-12-15 | 4d | 2022-12-12 | 2022-12-15 |  | Lê Huy Phước | 32h | 6.4h | 160 | 160 | 32 |
| 23 | 3 | **Back-end** |  | 29d | 2022-11-01 A | 2022-12-09 |  | 76% | 6.96d | 2022-11-01 | 2022-12-08 | 28d | 2022-11-01 | 2022-12-09 | 0d |  | 400h | 304h | 2,136 | 2,184 | 1,624 |
| 24 | 3.1 | **Thiết lập cơ sở dữ liệu** |  | 1d | 2022-11-01 A | 2022-11-01 A |  | 100% |  | 2022-11-01 | 2022-11-01 | 1d | 2022-11-01 | 2022-11-01 |  |  | 24h | 24h | 128 | 128 | 128 |
| 25 | 3.1.1 | Lấy dữ liệu các trạm từ bên thứ 3 | manual | 1d | 2022-11-01 A | 2022-11-01 A |  | 100% |  | 2022-11-01 | 2022-11-01 | 1d | 2022-11-01 | 2022-11-01 |  | Hà Minh Đức | 8h | 8h | 48 | 48 | 48 |
| 26 | 3.1.2 | Lấy dữ liệu các tuyến từ bên thứ 3 | manual | 1d | 2022-11-01 A | 2022-11-01 A |  | 100% |  | 2022-11-01 | 2022-11-01 | 1d | 2022-11-01 | 2022-11-01 |  | Hồ Đức Trí | 8h | 8h | 40 | 40 | 40 |
| 27 | 3.1.3 | Cập nhật dữ liệu theo chu kỳ | manual | 1d | 2022-11-01 A | 2022-11-01 A |  | 100% |  | 2022-11-01 | 2022-11-01 | 1d | 2022-11-01 | 2022-11-01 |  | Vũ Đình Phú | 8h | 8h | 40 | 40 | 40 |

| ID | WBS | Task | Type | Duration | Start | Finish | Predecessors | Complete | Remaining | Baseline start | Baseline finish | Baseline duration | Baseline 1 start | Baseline 1 finish | Total slack | Resources | Work | Actual work | Cost | Baseline cost | Actual cost |
| --- | --- | --- | --- | --- | --- | --- | --- | --- | --- | --- | --- | --- | --- | --- | --- | --- | --- | --- | --- | --- | --- |
| 28 | 3.2 | **API danh sách các trạm xe buýt** |  | 6d | 2022-11-02 A | 2022-11-09 A |  | 100% |  | 2022-11-02 | 2022-11-09 | 6d | 2022-11-02 | 2022-11-09 |  |  | 48h | 48h | 240 | 240 | 240 |
| 29 | 3.2.1 | Lấy dữ liệu từ cơ sở dữ liệu | manual | 2d | 2022-11-02 A | 2022-11-03 A | 25 | 100% |  | 2022-11-02 | 2022-11-03 | 2d | 2022-11-02 | 2022-11-03 |  | Vũ Đình Phú | 16h | 16h | 80 | 80 | 80 |
| 30 | 3.2.2 | Xử lý và trả về thông tin các trạm | manual | 4d | 2022-11-04 A | 2022-11-09 A | 29 | 100% |  | 2022-11-04 | 2022-11-09 | 4d | 2022-11-04 | 2022-11-09 |  | Vũ Đình Phú | 32h | 32h | 160 | 160 | 160 |
| 31 | 3.3 | **API danh sách các tuyến xe buýt** |  | 7d | 2022-11-02 A | 2022-11-10 A |  | 100% |  | 2022-11-02 | 2022-11-10 | 7d | 2022-11-02 | 2022-11-10 |  |  | 56h | 56h | 336 | 336 | 336 |
| 32 | 3.3.1 | Lấy dữ liệu từ cơ sở dữ liệu | manual | 2d | 2022-11-02 A | 2022-11-03 A | 26 | 100% |  | 2022-11-02 | 2022-11-03 | 2d | 2022-11-02 | 2022-11-03 |  | Hà Minh Đức | 16h | 16h | 96 | 96 | 96 |
| 33 | 3.3.2 | Xử lý và trả về thông tin các tuyến xe buýt | manual | 5d | 2022-11-04 A | 2022-11-10 A | 32 | 100% |  | 2022-11-04 | 2022-11-10 | 5d | 2022-11-04 | 2022-11-10 |  | Hà Minh Đức | 40h | 40h | 240 | 240 | 240 |
| 34 | 3.4 | **API chi tiết thông tin tuyến xe buýt cụ thể** |  | 6d | 2022-11-02 A | 2022-11-09 A |  | 100% |  | 2022-11-02 | 2022-11-10 | 7d | 2022-11-02 | 2022-11-09 |  |  | 48h | 48h | 240 | 280 | 240 |
| 35 | 3.4.1 | Lấy dữ liệu từ cơ sở dữ liệu |  | 2d | 2022-11-02 A | 2022-11-03 A | 26 | 100% |  | 2022-11-02 | 2022-11-03 | 2d | 2022-11-02 | 2022-11-03 |  | Hồ Đức Trí | 16h | 16h | 80 | 80 | 80 |
| 36 | 3.4.2 | Xử lý và trả về thông tin của 1 tuyến xe buýt cụ thể |  | 4d | 2022-11-04 A | 2022-11-09 A | 35 | 100% |  | 2022-11-04 | 2022-11-10 | 5d | 2022-11-04 | 2022-11-09 |  | Hồ Đức Trí | 32h | 32h | 160 | 200 | 160 |
| 37 | 3.5 | **API danh sách các cách đi khả dụng từ vị trí A đến vị trí B** |  | 22d | 2022-11-10 A | 2022-12-09 |  | 47% | 11.73d | 2022-11-10 | 2022-12-08 | 21d | 2022-11-10 | 2022-12-09 | 0d |  | 120h | 56h | 600 | 560 | 280 |
| 38 | 3.5.1 | Tìm các cách di chuyển từ A đến B theo các tiêu chí: đường đi ngắn nhất, chuyển tuyến ít nhất | manual | 10d | 2022-11-10 A | 2022-11-24 | 10 | 70% | 3d | 2022-11-10 | 2022-11-23 | 10d | 2022-11-10 | 2022-11-24 |  | Vũ Đình Phú | 80h | 56h | 400 | 400 | 280 |
| 39 | 3.5.2 | Trả về danh sách kèm theo chi tiết đường đi cụ thể của từng cách | manual | 5d | 2022-12-05 | 2022-12-09 | 38 |  |  | 2022-12-05 | 2022-12-08 | 4d | 2022-12-05 | 2022-12-09 |  | Hồ Đức Trí | 40h |  | 200 | 160 |  |
| 40 | 3.6 | **API đánh giá tuyến xe buýt** |  | 5d | 2022-11-24 A | 2022-11-30 |  | 20% | 4d | 2022-11-24 | 2022-12-01 | 6d | 2022-11-24 | 2022-11-30 | 0d |  | 40h | 8h | 240 | 288 | 48 |
| 41 | 3.6.1 | Nhận và lưu trữ đánh giá | manual | 5d | 2022-11-24 A | 2022-11-30 | 19 | 20% | 4d | 2022-11-24 | 2022-12-01 | 6d | 2022-11-24 | 2022-11-30 |  | Hà Minh Đức | 40h | 8h | 240 | 288 | 48 |
| 42 | 3.7 | **API gửi thông báo** |  | 4d | 2022-11-11 A | 2022-11-16 A |  | 100% |  | 2022-11-11 | 2022-11-16 | 4d | 2022-11-11 | 2022-11-16 |  |  | 64h | 64h | 352 | 352 | 352 |
| 43 | 3.7.1 | Thông báo chuyến xe sắp đến trạm |  | 4d | 2022-11-11 A | 2022-11-16 A | 25, 26 | 100% |  | 2022-11-11 | 2022-11-16 | 4d | 2022-11-11 | 2022-11-16 |  | Hồ Đức Trí | 32h | 32h | 160 | 160 | 160 |
| 44 | 3.7.2 | Thông báo khi tuyến xe thay đổi lịch trình |  | 4d | 2022-11-11 A | 2022-11-16 A | 26 | 100% |  | 2022-11-11 | 2022-11-16 | 4d | 2022-11-11 | 2022-11-16 |  | Hà Minh Đức | 32h | 32h | 192 | 192 | 192 |
